# DFS人力资源系统重构项目

How a schedule from a web Gantt chart changed from version to version. A marks actual dates.

## Version 1 (saved 2024-07-03)

| ID | WBS | Task | Duration | Start | Finish |
| --- | --- | --- | --- | --- | --- |
| 2 | 1 | **项目准备阶段** | 1d | 2024-07-01 | 2024-07-01 |
| 3 |  | 商务准备 | 1d | 2024-07-01 | 2024-07-01 |

## Version 2 (saved 2024-07-03)

Last finish 2024-07-01 → 2026-06-30 (+729d). Complete tasks 0 → 3.

Added:

| ID | Task | Duration | Start | Finish | Predecessors |
| --- | --- | --- | --- | --- | --- |
| 4 | 技术协议书编写 | 5d | 2024-07-01 | 2024-07-05 |  |
| 5 | 合同签署确认 | 23d | 2024-07-01 | 2024-07-31 |  |
| 6 | **建立项目组工作环境** | 3d | 2024-07-01 | 2024-07-03 |  |
| 7 | 办公室和会议室 | 1d | 2024-07-01 | 2024-07-01 |  |
| 8 | 门禁、网络、通讯工具、饭卡、SVN | 3d | 2024-07-01 | 2024-07-03 |  |
| 9 | 其他办公设备和后勤保障（打印等） | 3d | 2024-07-01 | 2024-07-03 |  |
| 10 | **确定项目组机构** | 20d | 2024-07-01 | 2024-07-26 |  |
| 11 | 东风南方项目组织架构搭建 | 5d | 2024-07-01 | 2024-07-05 |  |
| 12 | 盖雅项目组织架构搭建 | 5d | 2024-07-01 | 2024-07-05 |  |
| 13 | 东风南方项目组成员和关键用户确认 | 15d | 2024-07-08 | 2024-07-26 |  |
| 14 | 盖雅项目组成员确认 | 15d | 2024-07-08 | 2024-07-26 |  |
| 15 | **项目启动阶段** | 65d | 2024-07-01 | 2024-09-27 |  |
| 16 | **项目章程编写** | 5d | 2024-07-01 | 2024-07-05 |  |
| 17 | 制定项目管理的标准与规范 | 5d | 2024-07-01 | 2024-07-05 |  |
| 18 | 确定项目沟通交流策略及计划 | 5d | 2024-07-01 | 2024-07-05 |  |
| 19 | 项目实施方法及管理方案 | 5d | 2024-07-01 | 2024-07-05 |  |
| 20 | 定义项目文件管理方法 | 5d | 2024-07-01 | 2024-07-05 |  |
| 21 | 项目问题管理方案 | 5d | 2024-07-01 | 2024-07-05 |  |
| 22 | **实施计划编写** | 10d | 2024-07-01 | 2024-07-12 |  |
| 23 | 定义项目实施目标 | 5d | 2024-07-08 | 2024-07-12 |  |
| 24 | 确定项目实施策略及方法 | 5d | 2024-07-08 | 2024-07-12 |  |
| 25 | 制定并完善项目工作计划 | 10d | 2024-07-01 | 2024-07-12 |  |
| 26 | **项目启动会** | 30d | 2024-07-15 | 2024-08-23 |  |
| 27 | 启动会材料准备 | 10d | 2024-07-15 | 2024-07-26 |  |
| 28 | 项目启动会 | 5d | 2024-08-19 | 2024-08-23 |  |
| 29 | **管理层汇报及沟通** | 15d | 2024-07-29 | 2024-08-16 |  |
| 30 | 人力资源部领导汇报 | 5d | 2024-07-29 | 2024-08-02 |  |
| 31 | 高层访谈和愿景研讨 | 5d | 2024-08-12 | 2024-08-16 |  |
| 32 | **业务调研阶段** | 50d | 2024-07-08 | 2024-09-13 |  |
| 33 | **业务现状初步沟通** | 15d | 2024-07-08 | 2024-07-26 |  |
| 34 | 现状问卷准备 | 2d | 2024-07-08 | 2024-07-09 |  |
| 35 | 集团现状业务沟通（含总部7个部门） | 3d | 2024-07-10 | 2024-07-12 |  |
| 36 | 重点二级单位现状业务沟通 | 5d | 2024-07-15 | 2024-07-19 |  |
| 37 | 集团现状业务沟通结果分析 | 5d | 2024-07-22 | 2024-07-26 |  |
| 38 | **业务需求调研** | 45d | 2024-07-29 | 2024-09-27 |  |
| 39 | 调研问卷准备 | 15d | 2024-07-29 | 2024-08-16 |  |
| 40 | 调研问卷下发 | 1d | 2024-08-23 | 2024-08-23 |  |
| 41 | 调研问卷回收 | 5d | 2024-08-26 | 2024-08-30 |  |
| 42 | 调研问卷分析 | 5d | 2024-09-02 | 2024-09-06 |  |
| 43 | 二级单位访谈 | 15d | 2024-09-09 | 2024-09-27 |  |
| 44 | **数据标准调研** | 40d | 2024-07-29 | 2024-09-20 |  |
| 45 | 制作数据字典收集模板 | 15d | 2024-07-29 | 2024-08-16 |  |
| 46 | 数据字典收集模板下发 | 1d | 2024-08-23 | 2024-08-23 |  |
| 47 | 数据字典回收 | 5d | 2024-08-26 | 2024-08-30 |  |
| 48 | 组织用户统一平台访谈 | 5d | 2024-09-02 | 2024-09-06 |  |
| 49 | 其他关联系统访谈 | 10d | 2024-09-09 | 2024-09-20 |  |
| 50 | **系统蓝图阶段** | 105d | 2024-07-08 | 2024-11-29 |  |
| 51 | **硬件环境准备** | 50d | 2024-07-08 | 2024-09-13 |  |
| 52 | 定义环境需求 | 5d | 2024-07-08 | 2024-07-12 |  |
| 53 | 定义和分配团队系统访问权限 | 5d | 2024-07-08 | 2024-07-12 |  |
| 54 | 定义技术标准和流程 | 5d | 2024-07-08 | 2024-07-12 |  |
| 55 | 硬件蓝图设计文档编写 | 5d | 2024-07-08 | 2024-07-12 |  |
| 56 | 硬件环境准备 | 5d | 2024-08-26 | 2024-08-30 |  |
| 57 | 测试、生产环境系统安装和部署 | 10d | 2024-09-02 | 2024-09-13 |  |
| 58 | 系统标准功能搭建 | 34d | 2024-09-16 | 2024-10-31 | 57 |
| 59 | 组织人事业务咨询 | 25d | 2024-09-30 | 2024-11-01 | 43 |
| 60 | 数据标准梳理 | 30d | 2024-09-23 | 2024-11-01 | 49 |
| 61 | 系统蓝图设计 | 20d | 2024-11-04 | 2024-11-29 | 59 |
| 62 | 数据收集 | 1d | 2024-09-16 | 2024-09-16 |  |
| 63 | 系统实施阶段 | 150d | 2024-11-04 | 2025-05-30 |  |
| 64 | 系统上线阶段 | 21d | 2025-06-02 | 2025-06-30 |  |
| 65 | 上线支持阶段 | 261d | 2025-07-01 | 2026-06-30 |  |

Changed:

| ID | Task | Finish | Duration | Complete |
| --- | --- | --- | --- | --- |
| 2 | **项目准备阶段** | 2024-07-01 → 2024-07-31 (+30d) | 1d → 23d | 0% → 9% |
| 3 | **商务准备** | 2024-07-01 → 2024-07-31 (+30d) | 1d → 23d |  |

## Version 3 (saved 2024-07-04)

Last finish stays 2026-06-30.

Added:

| ID | Task | Duration | Start | Finish | Predecessors |
| --- | --- | --- | --- | --- | --- |
| 36 | 财务部 | 1d | 2024-07-10 | 2024-07-10 |  |
| 37 | 办公室 | 1d | 2024-07-10 | 2024-07-10 |  |
| 38 | 经营规划部 | 1d | 2024-07-11 | 2024-07-11 |  |
| 39 | 汽车营销事业部 | 1d | 2024-07-11 | 2024-07-11 |  |
| 40 | 党群工作部 | 1d | 2024-07-12 | 2024-07-12 |  |
| 41 | 纪检监察部 | 1d | 2024-07-12 | 2024-07-12 |  |
| 42 | 人力资源部 | 1d | 2024-07-12 | 2024-07-12 |  |
| 44 | 广州实业 | 1d | 2024-07-15 | 2024-07-15 |  |
| 45 | 锦上技研 | 1d | 2024-07-16 | 2024-07-16 |  |
| 46 | 联友出行 | 1d | 2024-07-17 | 2024-07-17 |  |
| 47 | 数据公司 | 1d | 2024-07-18 | 2024-07-18 |  |
| 48 | 联友科技 | 1d | 2024-07-19 | 2024-07-19 |  |
| 49 | 营销板块典型单位 | 1d | 2024-07-19 | 2024-07-19 |  |
| 72 | 开发环境配置 | 10d | 2024-09-16 | 2024-09-27 |  |
| 73 | 测试环境配置 | 10d | 2024-09-30 | 2024-10-11 | 72 |
| 74 | 生产环境配置 | 5d | 2024-10-14 | 2024-10-18 | 73 |
| 75 | 环境功能验证 | 5d | 2024-10-21 | 2024-10-25 | 74 |
| 78 | 数据标准制定 | 15d | 2024-08-19 | 2024-09-06 |  |
| 79 | 数据标准确认和调整 | 10d | 2024-09-09 | 2024-09-20 | 78 |
| 80 | 数据收集模板制作 | 5d | 2024-09-16 | 2024-09-20 |  |
| 81 | **系统蓝图设计和确认** | 20d | 2024-10-21 | 2024-11-15 | 76 |
| 82 | 蓝图设计 | 10d | 2024-10-21 | 2024-11-01 |  |
| 83 | 蓝图确认及调整 | 10d | 2024-11-04 | 2024-11-15 | 82 |
| 85 | 数据收集模板下发 | 1d | 2024-09-23 | 2024-09-23 | 80 |
| 86 | 数据回收和校验 | 14d | 2024-09-24 | 2024-10-11 | 85 |
| 87 | 数据清洗转换和导入 | 20d | 2024-10-28 | 2024-11-22 | 71 |
| 88 | 系统标准功能培训 | 4d | 2024-11-25 | 2024-11-28 |  |
| 89 | 系统切换 | 1d | 2024-11-29 | 2024-11-29 | 88 |

Removed: 61 系统蓝图设计

Changed:

| ID | Task | Start | Finish | Duration | Predecessors |
| --- | --- | --- | --- | --- | --- |
| 15 | **项目启动阶段** |  | 2024-09-27 → 2024-08-16 (-42d) | 65d → 35d |  |
| 22 | **实施计划编写** |  | 2024-07-12 → 2024-08-02 (+21d) | 10d → 25d |  |
| 23 | 定义项目实施目标 | 2024-07-08 → 2024-07-22 (+14d) | 2024-07-12 → 2024-08-02 (+21d) | 5d → 10d |  |
| 24 | 确定项目实施策略及方法 | 2024-07-08 → 2024-07-22 (+14d) | 2024-07-12 → 2024-08-02 (+21d) | 5d → 10d |  |
| 25 | 制定并完善项目工作计划 |  | 2024-07-12 → 2024-08-02 (+21d) | 10d → 25d |  |
| 26 | **项目启动会** |  | 2024-08-23 → 2024-08-16 (-7d) | 30d → 25d |  |
| 27 | 启动会材料准备 |  | 2024-07-26 → 2024-08-02 (+7d) | 10d → 15d |  |
| 28 | 项目启动会 | 2024-08-19 → 2024-08-12 (-7d) | 2024-08-23 → 2024-08-16 (-7d) |  |  |
| 29 | **管理层汇报及沟通** | 2024-07-29 → 2024-07-22 (-7d) | 2024-08-16 → 2024-08-02 (-14d) | 15d → 10d |  |
| 30 | 人力资源部领导汇报 | 2024-07-29 → 2024-07-22 (-7d) | 2024-08-02 → 2024-07-26 (-7d) |  |  |
| 31 | 高层访谈和愿景研讨 | 2024-08-12 → 2024-07-29 (-14d) | 2024-08-16 → 2024-08-02 (-14d) |  |  |
| 32 | **业务调研阶段** | 2024-07-08 → 2024-07-05 (-3d) |  | 50d → 51d |  |
| 33 | **业务现状初步沟通** | 2024-07-08 → 2024-07-05 (-3d) |  | 15d → 16d |  |
| 34 | 现状问卷准备 | 2024-07-08 → 2024-07-05 (-3d) |  | 2d → 3d |  |
| 51 | **业务需求调研** |  | 2024-09-27 → 2024-09-13 (-14d) | 45d → 35d |  |
| 52 | 调研问卷准备 |  |  |  | none → 50 |
| 53 | 调研问卷下发 | 2024-08-23 → 2024-08-19 (-4d) | 2024-08-23 → 2024-08-19 (-4d) |  | none → 28 |
| 54 | 调研问卷回收 | 2024-08-26 → 2024-08-20 (-6d) | 2024-08-30 → 2024-08-21 (-9d) | 5d → 2d | none → 53 |
| 55 | 调研问卷分析 | 2024-09-02 → 2024-08-22 (-11d) | 2024-09-06 → 2024-08-23 (-14d) | 5d → 2d | none → 54 |
| 56 | 二级单位访谈 | 2024-09-09 → 2024-08-26 (-14d) | 2024-09-27 → 2024-09-13 (-14d) |  | none → 55 |
| 57 | **数据标准调研** | 2024-07-29 → 2024-07-22 (-7d) | 2024-09-20 → 2024-08-30 (-21d) | 40d → 30d |  |
| 58 | 制作数据字典收集模板 | 2024-07-29 → 2024-07-22 (-7d) | 2024-08-16 → 2024-07-26 (-21d) | 15d → 5d |  |
| 59 | 数据字典收集模板下发 | 2024-08-23 → 2024-07-29 (-25d) | 2024-08-23 → 2024-07-29 (-25d) |  | none → 58 |
| 60 | 数据字典回收 | 2024-08-26 → 2024-07-30 (-27d) | 2024-08-30 → 2024-08-02 (-28d) | 5d → 4d | none → 59 |
| 61 | 组织用户统一平台访谈 | 2024-09-02 → 2024-08-12 (-21d) | 2024-09-06 → 2024-08-16 (-21d) |  |  |
| 62 | 其他关联系统访谈 | 2024-09-09 → 2024-08-19 (-21d) | 2024-09-20 → 2024-08-30 (-21d) |  | none → 61 |
| 71 | **系统标准功能搭建** |  | 2024-10-31 → 2024-10-25 (-6d) | 34d → 30d |  |
| 76 | 组织人事业务咨询 | 2024-09-30 → 2024-09-16 (-14d) | 2024-11-01 → 2024-10-18 (-14d) |  |  |
| 77 | **数据标准梳理** | 2024-09-23 → 2024-08-19 (-35d) | 2024-11-01 → 2024-09-20 (-42d) | 30d → 25d | 62 → 61 |
| 84 | **数据收集** | 2024-09-16 → 2024-09-23 (+7d) | 2024-09-16 → 2024-10-11 (+25d) | 1d → 15d | none → 79 |
| 90 | 系统实施阶段 | 2024-11-04 → 2024-11-25 (+21d) | 2025-05-30 → 2025-05-23 (-7d) | 150d → 130d | none → 87 |

## Version 4 (saved 2024-07-05)

Last finish 2026-06-30 → 2026-09-30 (+92d).

Added:

| ID | Task | Duration | Start | Finish | Predecessors |
| --- | --- | --- | --- | --- | --- |
| 2 | **项目商务阶段** | 23d | 2024-07-01 | 2024-07-31 |  |
| 25 | **业务现状沟通** | 16d | 2024-07-05 | 2024-07-26 |  |
| 29 | 人力资源部部长访谈 | 1d | 2024-07-10 | 2024-07-10 |  |
| 30 | 高层访谈 | 1d | 2024-07-10 | 2024-07-10 |  |
| 45 | **启动会材料汇报** | 10d | 2024-07-22 | 2024-08-02 |  |
| 47 | 高层汇报 | 5d | 2024-07-29 | 2024-08-02 |  |
| 51 | **系统产品安装** | 50d | 2024-07-08 | 2024-09-13 |  |
| 58 | **系统切换阶段** | 95d | 2024-07-22 | 2024-11-29 |  |
| 77 | 组织业务咨询 | 25d | 2024-09-16 | 2024-10-18 |  |
| 78 | 人事业务咨询 | 25d | 2024-09-16 | 2024-10-18 |  |
| 92 | **业务线上化阶段** | 160d | 2024-11-18 | 2025-06-27 |  |
| 93 | 详细功能设计 | 20d | 2024-11-18 | 2024-12-13 | 88 |
| 94 | 固定格式报表开发 | 30d | 2024-12-16 | 2025-01-24 |  |
| 95 | 人事流程开发 | 85d | 2024-12-16 | 2025-04-11 |  |
| 96 | 员工自助开发 | 55d | 2025-01-27 | 2025-04-11 |  |
| 97 | 接口平台开发 | 55d | 2025-01-27 | 2025-04-11 |  |
| 98 | 分析报表开发 | 30d | 2025-03-03 | 2025-04-11 |  |
| 99 | 系统测试 | 35d | 2025-04-14 | 2025-05-30 |  |
| 100 | 最终用户培训 | 10d | 2025-06-02 | 2025-06-13 | 99 |
| 101 | 业务线上化上线 | 10d | 2025-06-16 | 2025-06-27 | 100 |
| 102 | **项目验收阶段** | 328d | 2025-06-30 | 2026-09-30 |  |
| 103 | 系统试运行 | 67d | 2025-06-30 | 2025-09-30 | 101 |

Removed: 3 商务准备; 15 项目启动阶段; 29 管理层汇报及沟通; 31 高层访谈和愿景研讨; 32 业务调研阶段; 33 业务现状初步沟通; 63 系统蓝图阶段; 64 硬件环境准备; 90 系统实施阶段; 91 系统上线阶段

Changed:

| ID | Task | Start | Finish | Duration | Complete | Predecessors |
| --- | --- | --- | --- | --- | --- | --- |
| 5 | **项目准备阶段** |  | 2024-07-31 → 2024-09-13 (+44d) | 23d → 55d | 9% → 3% |  |
| 27 | **集团现状业务沟通（含总部7个部门）** |  | 2024-07-12 → 2024-07-11 (-1d) | 3d → 2d |  |  |
| 28 | 人力资源部 | 2024-07-12 → 2024-07-10 (-2d) | 2024-07-12 → 2024-07-10 (-2d) |  |  |  |
| 31 | 财务部 | 2024-07-10 → 2024-07-11 (+1d) | 2024-07-10 → 2024-07-11 (+1d) |  |  | none → 30 |
| 32 | 办公室 | 2024-07-10 → 2024-07-11 (+1d) | 2024-07-10 → 2024-07-11 (+1d) |  |  | none → 30 |
| 33 | 经营规划部 |  |  |  |  | none → 30 |
| 34 | 汽车营销事业部 |  |  |  |  | none → 30 |
| 35 | 党群工作部 | 2024-07-12 → 2024-07-11 (-1d) | 2024-07-12 → 2024-07-11 (-1d) |  |  | none → 30 |
| 36 | 纪检监察部 | 2024-07-12 → 2024-07-11 (-1d) | 2024-07-12 → 2024-07-11 (-1d) |  |  | none → 30 |
| 79 | **数据标准梳理** |  | 2024-09-20 → 2024-10-07 (+17d) | 25d → 36d |  |  |
| 80 | 数据标准制定 |  | 2024-09-06 → 2024-09-13 (+7d) | 15d → 20d |  |  |
| 81 | 数据标准确认和调整 | 2024-09-09 → 2024-09-16 (+7d) | 2024-09-20 → 2024-09-30 (+10d) | 10d → 11d |  |  |
| 82 | 数据收集模板制作 | 2024-09-16 → 2024-09-23 (+7d) | 2024-09-20 → 2024-10-07 (+17d) | 5d → 11d |  |  |
| 83 | **数据收集** | 2024-09-23 → 2024-10-08 (+15d) | 2024-10-11 → 2024-10-25 (+14d) | 15d → 14d |  | 81 → none |
| 84 | 数据收集模板下发 | 2024-09-23 → 2024-10-08 (+15d) | 2024-09-23 → 2024-10-08 (+15d) |  |  |  |
| 85 | 数据回收和校验 | 2024-09-24 → 2024-10-09 (+15d) | 2024-10-11 → 2024-10-25 (+14d) | 14d → 13d |  |  |
| 86 | **系统蓝图设计和确认** |  |  |  |  | 76 → none |
| 89 | 数据清洗转换和导入 |  |  |  |  | 71 → 85 |
| 90 | 系统标准功能培训 |  |  |  |  | none → 89 |
| 104 | 上线支持阶段 | 2025-07-01 → 2025-10-01 (+92d) | 2026-06-30 → 2026-09-30 (+92d) |  |  | none → 103 |

## Version 5 (saved 2024-07-08)

Last finish stays 2026-09-30.

Removed: 30 高层访谈

Changed:

| ID | Task | Start | Finish | Duration | Predecessors |
| --- | --- | --- | --- | --- | --- |
| 27 | **集团现状业务沟通（含总部7个部门）** | 2024-07-10 → 2024-07-08 (-2d) | 2024-07-11 → 2024-07-19 (+8d) | 2d → 10d |  |
| 28 | 人力资源部 | 2024-07-10 → 2024-07-08 (-2d) | 2024-07-10 → 2024-07-09 (-1d) | 1d → 2d |  |
| 29 | 财务部 | 2024-07-11 → 2024-07-10 (-1d) | 2024-07-11 → 2024-07-12 (+1d) | 1d → 3d | 高层访谈 → none |
| 30 | 办公室 | 2024-07-11 → 2024-07-10 (-1d) | 2024-07-11 → 2024-07-12 (+1d) | 1d → 3d | 高层访谈 → none |
| 31 | 经营规划部 | 2024-07-11 → 2024-07-10 (-1d) | 2024-07-11 → 2024-07-12 (+1d) | 1d → 3d | 高层访谈 → none |
| 32 | 汽车营销事业部 | 2024-07-11 → 2024-07-10 (-1d) | 2024-07-11 → 2024-07-12 (+1d) | 1d → 3d | 高层访谈 → none |
| 33 | 党群工作部 | 2024-07-11 → 2024-07-10 (-1d) | 2024-07-11 → 2024-07-12 (+1d) | 1d → 3d | 高层访谈 → none |
| 34 | 纪检监察部 | 2024-07-11 → 2024-07-10 (-1d) | 2024-07-11 → 2024-07-12 (+1d) | 1d → 3d | 高层访谈 → none |
| 35 | 人力资源部部长访谈 | 2024-07-10 → 2024-07-15 (+5d) | 2024-07-10 → 2024-07-19 (+9d) | 1d → 5d |  |

## Version 6 (saved 2024-07-12)

Last finish stays 2026-09-30.

Changed:

| ID | Task | Start | Finish | Duration | Complete |
| --- | --- | --- | --- | --- | --- |
| 5 | **项目准备阶段** |  |  |  | 3% → 2% |
| 27 | **集团现状业务沟通（含总部7个部门）** | 2024-07-08 → 2024-07-15 (+7d) | 2024-07-19 → 2024-07-26 (+7d) |  |  |
| 28 | 人力资源部 | 2024-07-08 → 2024-07-15 (+7d) | 2024-07-09 → 2024-07-15 (+6d) | 2d → 1d |  |
| 29 | 财务部 | 2024-07-10 → 2024-07-16 (+6d) | 2024-07-12 → 2024-07-26 (+14d) | 3d → 9d |  |
| 30 | 办公室 | 2024-07-10 → 2024-07-16 (+6d) | 2024-07-12 → 2024-07-26 (+14d) | 3d → 9d |  |
| 31 | 经营规划部 | 2024-07-10 → 2024-07-16 (+6d) | 2024-07-12 → 2024-07-26 (+14d) | 3d → 9d |  |
| 32 | 汽车营销事业部 | 2024-07-10 → 2024-07-16 (+6d) | 2024-07-12 → 2024-07-26 (+14d) | 3d → 9d |  |
| 33 | 党群工作部 | 2024-07-10 → 2024-07-16 (+6d) | 2024-07-12 → 2024-07-26 (+14d) | 3d → 9d |  |
| 34 | 纪检监察部 | 2024-07-10 → 2024-07-16 (+6d) | 2024-07-12 → 2024-07-26 (+14d) | 3d → 9d |  |
| 35 | 人力资源部部长访谈 | 2024-07-15 → 2024-07-19 (+4d) |  | 5d → 1d |  |
| 36 | **重点二级单位现状业务沟通** | 2024-07-15 → 2024-07-16 (+1d) | 2024-07-19 → 2024-07-26 (+7d) | 5d → 9d |  |
| 37 | 广州实业 | 2024-07-15 → 2024-07-16 (+1d) | 2024-07-15 → 2024-07-26 (+11d) | 1d → 9d |  |
| 38 | 锦上技研 |  | 2024-07-16 → 2024-07-26 (+10d) | 1d → 9d |  |
| 39 | 联友出行 | 2024-07-17 → 2024-07-16 (-1d) | 2024-07-17 → 2024-07-26 (+9d) | 1d → 9d |  |
| 40 | 数据公司 | 2024-07-18 → 2024-07-16 (-2d) | 2024-07-18 → 2024-07-26 (+8d) | 1d → 9d |  |
| 41 | 联友科技 | 2024-07-19 → 2024-07-16 (-3d) | 2024-07-19 → 2024-07-26 (+7d) | 1d → 9d |  |
| 42 | 营销板块典型单位 | 2024-07-19 → 2024-07-16 (-3d) | 2024-07-19 → 2024-07-26 (+7d) | 1d → 9d |  |

## Version 7 (saved 2024-07-15)

Last finish stays 2026-09-30. Complete tasks 3 → 12.

Changed:

| ID | Task | Complete |
| --- | --- | --- |
| 2 | **项目商务阶段** | 0% → 18% |
| 3 | 技术协议书编写 | 0% → 100% |
| 5 | **项目准备阶段** | 2% → 15% |
| 10 | **确定项目组机构** | 0% → 25% |
| 11 | 东风南方项目组织架构搭建 | 0% → 100% |
| 12 | 盖雅项目组织架构搭建 | 0% → 100% |
| 15 | **项目章程编写** | 0% → 100% |
| 16 | 制定项目管理的标准与规范 | 0% → 100% |
| 17 | 确定项目沟通交流策略及计划 | 0% → 100% |
| 18 | 项目实施方法及管理方案 | 0% → 100% |
| 19 | 定义项目文件管理方法 | 0% → 100% |
| 20 | 项目问题管理方案 | 0% → 100% |
| 25 | **业务现状沟通** | 0% → 3% |
| 26 | 现状问卷准备 | 0% → 100% |

## Version 8 (saved 2024-07-17)

Last finish stays 2026-09-30.

Added:

| ID | Task | Duration | Start | Finish |
| --- | --- | --- | --- | --- |
| 37 | 二级单位访谈 | 9d | 2024-07-16 | 2024-07-26 |

Removed: 37 广州实业; 38 锦上技研; 39 联友出行; 40 数据公司; 41 联友科技

Changed:

| ID | Task | Start | Finish | Duration | Complete |
| --- | --- | --- | --- | --- | --- |
| 5 | **项目准备阶段** |  |  |  | 15% → 17% |
| 25 | **业务现状沟通** |  |  |  | 3% → 4% |
| 40 | **启动会材料汇报** | 2024-07-22 → 2024-07-29 (+7d) |  | 10d → 5d |  |
| 41 | 人力资源部领导汇报 | 2024-07-22 → 2024-07-29 (+7d) | 2024-07-26 → 2024-08-02 (+7d) |  |  |
| 43 | **项目启动会** | 2024-07-15 → 2024-07-22 (+7d) |  | 25d → 20d |  |
| 44 | 启动会材料准备 | 2024-07-15 → 2024-07-22 (+7d) |  | 15d → 10d |  |

## Version 9 (saved 2024-08-01)

Last finish stays 2026-09-30. Complete tasks 12 → 32.

Added:

| ID | Task | Duration | Start | Finish | Predecessors |
| --- | --- | --- | --- | --- | --- |
| 26 | 访谈问卷准备 | 3d | 2024-07-05 | 2024-07-09 |  |
| 27 | **总部机关部门访谈** | 11d | 2024-07-15 | 2024-07-29 |  |
| 35 | 数转办 | 1d | 2024-07-29 | 2024-07-29 |  |
| 36 | 集团现状业务沟通总结 | 5d | 2024-07-29 | 2024-08-02 |  |
| 39 | 启动会材料汇报 | 4d | 2024-09-09 | 2024-09-12 |  |
| 42 | 硬件环境需求填报 | 1d | 2024-07-29 | 2024-07-29 |  |
| 43 | 硬件环境需求申请 | 20d | 2024-07-29 | 2024-08-23 |  |
| 44 | 数转办提供蓝图评审模板 | 2d | 2024-08-15 | 2024-08-16 |  |
| 45 | 基础设施蓝图设计文档编写 | 17d | 2024-07-29 | 2024-08-20 |  |
| 46 | 数转办基础设施蓝图设计评审 | 3d | 2024-08-21 | 2024-08-23 | 45 |
| 50 | 保险代理公司调研 | 1d | 2024-07-22 | 2024-07-22 |  |
| 51 | 数据公司（风神咨询）调研 | 1d | 2024-07-25 | 2024-07-25 |  |
| 52 | 营销板块调研问卷准备 | 1d | 2024-07-29 | 2024-07-29 |  |
| 53 | 广州DFS调研需求说明会 | 1d | 2024-07-29 | 2024-07-29 |  |
| 54 | 非营销板块调研问卷准备 | 1d | 2024-07-30 | 2024-07-30 |  |
| 55 | 联友出行（郑州联友出行）调研需求说明会 | 1d | 2024-07-30 | 2024-07-30 |  |
| 56 | 广州实业调研 | 1d | 2024-08-12 | 2024-08-12 |  |
| 57 | 广州DFS（保代分公司）调研 | 1d | 2024-08-13 | 2024-08-13 |  |
| 58 | 石家庄、兰州调研需求说明会 | 1d | 2024-08-14 | 2024-08-14 |  |
| 59 | 锦上技研、锦上阳光调研 | 1d | 2024-08-15 | 2024-08-15 |  |
| 60 | 联友出行（郑州联友出行）调研 | 1d | 2024-08-15 | 2024-08-15 |  |
| 61 | 河北DFS（石家庄、保代分公司）调研 | 2d | 2024-08-19 | 2024-08-20 |  |
| 62 | 重庆DFS（兰州）调研 | 2d | 2024-08-21 | 2024-08-22 |  |
| 63 | 营销板块调研需求说明会 | 1d | 2024-08-23 | 2024-08-23 |  |
| 64 | 东南西北大区线上调研 | 4d | 2024-08-27 | 2024-08-30 |  |
| 65 | 联友科技调研需求说明会 | 1d | 2024-08-26 | 2024-08-26 |  |
| 66 | 联友科技调研（人力资源部【人事】、事业计划部【组织】、生产质量部【外包】） | 4d | 2024-08-27 | 2024-08-30 |  |
| 67 | 调研结果整理 | 5d | 2024-09-02 | 2024-09-06 |  |
| 68 | **数据标准调研和初版编写** | 20d | 2024-07-29 | 2024-08-23 |  |
| 69 | 收集数据标准（原用友系统、DFG、DFN） | 5d | 2024-07-29 | 2024-08-02 |  |
| 70 | 初版数据标准编写 | 5d | 2024-08-05 | 2024-08-09 | 69 |
| 71 | 初版数据标准讨论 | 2d | 2024-08-12 | 2024-08-13 |  |
| 72 | 初版数据标准数转办沟通 | 3d | 2024-08-14 | 2024-08-16 |  |
| 73 | 初版数据标准修订 | 5d | 2024-08-19 | 2024-08-23 |  |
| 75 | 组织、岗位、人事业务咨询 | 15d | 2024-09-09 | 2024-09-27 |  |
| 78 | 业务咨询报告 | 10d | 2024-09-30 | 2024-10-11 | 75 |
| 79 | **业务蓝图设计和确认** | 10d | 2024-10-14 | 2024-10-25 |  |
| 80 | 业务蓝图设计 | 5d | 2024-10-14 | 2024-10-18 | 78 |
| 81 | 业务蓝图确认及调整 | 5d | 2024-10-21 | 2024-10-25 | 80 |
| 94 | 数据补录 | 22d | 2024-12-02 | 2024-12-31 | 93 |

Removed: 26 现状问卷准备; 27 集团现状业务沟通（含总部7个部门）; 35 人力资源部部长访谈; 36 重点二级单位现状业务沟通; 37 二级单位访谈; 38 营销板块典型单位; 39 集团现状业务沟通结果分析; 40 启动会材料汇报; 41 人力资源部领导汇报; 42 高层汇报; 47 定义环境需求; 48 定义和分配团队系统访问权限; 49 定义技术标准和流程; 50 硬件蓝图设计文档编写; 51 硬件环境准备; 55 调研问卷准备; 56 调研问卷下发; 57 调研问卷回收; 58 调研问卷分析; 59 二级单位访谈; 60 数据标准调研; 61 制作数据字典收集模板; 62 数据字典收集模板下发; 63 数据字典回收; 64 组织用户统一平台访谈; 65 其他关联系统访谈; 72 组织业务咨询; 73 人事业务咨询; 74 数据标准梳理; 81 系统蓝图设计和确认; 82 蓝图设计; 83 蓝图确认及调整

Changed:

| ID | Task | Start | Finish | Duration | Complete | Predecessors |
| --- | --- | --- | --- | --- | --- | --- |
| 2 | **项目商务阶段** |  |  |  | 18% → 100% |  |
| 4 | 合同签署确认 |  |  |  | 0% → 100% |  |
| 5 | **项目准备阶段** |  |  |  | 17% → 47% |  |
| 10 | **确定项目组机构** |  |  |  | 25% → 62% |  |
| 14 | 盖雅项目组成员确认 |  |  |  | 0% → 100% |  |
| 21 | **实施计划编写** |  |  |  | 0% → 44% |  |
| 22 | 定义项目实施目标 |  |  |  | 0% → 100% |  |
| 23 | 确定项目实施策略及方法 |  |  |  | 0% → 100% |  |
| 25 | **业务现状沟通** |  | 2024-07-26 → 2024-08-02 (+7d) | 16d → 21d | 4% → 76% |  |
| 28 | 人力资源部 |  |  |  | 0% → 100% |  |
| 29 | 财务部 |  | 2024-07-26 → 2024-07-16 (-10d) | 9d → 1d | 0% → 100% |  |
| 30 | 办公室 | 2024-07-16 → 2024-07-22 (+6d) | 2024-07-26 → 2024-07-22 (-4d) | 9d → 1d | 0% → 100% |  |
| 31 | 经营规划部 | 2024-07-16 → 2024-07-17 (+1d) | 2024-07-26 → 2024-07-17 (-9d) | 9d → 1d | 0% → 100% |  |
| 32 | 汽车营销事业部 | 2024-07-16 → 2024-07-17 (+1d) | 2024-07-26 → 2024-07-24 (-2d) | 9d → 6d | 0% → 100% |  |
| 33 | 党群工作部 | 2024-07-16 → 2024-07-22 (+6d) | 2024-07-26 → 2024-07-22 (-4d) | 9d → 1d | 0% → 100% |  |
| 34 | 纪检监察部 | 2024-07-16 → 2024-07-29 (+13d) | 2024-07-26 → 2024-07-29 (+3d) | 9d → 1d | 0% → 100% |  |
| 37 | **项目启动会** | 2024-07-22 → 2024-09-02 (+42d) | 2024-08-16 → 2024-09-13 (+28d) | 20d → 10d |  |  |
| 38 | 启动会材料准备 | 2024-07-22 → 2024-09-02 (+42d) | 2024-08-02 → 2024-09-06 (+35d) | 10d → 5d |  |  |
| 40 | 项目启动会 | 2024-08-12 → 2024-09-13 (+32d) | 2024-08-16 → 2024-09-13 (+28d) | 5d → 1d |  |  |
| 41 | **系统产品安装** | 2024-07-08 → 2024-07-29 (+21d) | 2024-09-13 → 2024-09-06 (-7d) | 50d → 30d | 0% → 2% |  |
| 47 | 测试、生产环境系统安装和部署 | 2024-09-02 → 2024-08-26 (-7d) | 2024-09-13 → 2024-09-06 (-7d) |  |  | none → 46 |
| 48 | **系统切换阶段** |  | 2024-11-29 → 2024-12-31 (+32d) | 95d → 117d | 0% → 6% |  |
| 49 | **业务需求调研** | 2024-07-29 → 2024-07-22 (-7d) | 2024-09-13 → 2024-09-06 (-7d) |  | 0% → 12% |  |
| 74 | **组织人事业务咨询** | 2024-09-16 → 2024-09-09 (-7d) | 2024-10-18 → 2024-10-11 (-7d) |  |  | 二级单位访谈 → none |
| 76 | 数据标准制定 | 2024-08-19 → 2024-09-09 (+21d) | 2024-09-13 → 2024-09-27 (+14d) | 20d → 15d |  |  |
| 77 | 数据标准确认和调整 | 2024-09-16 → 2024-09-30 (+14d) | 2024-09-30 → 2024-10-11 (+11d) | 11d → 10d |  |  |
| 82 | **数据收集** | 2024-10-08 → 2024-10-14 (+6d) | 2024-10-25 → 2024-11-15 (+21d) | 14d → 25d |  |  |
| 83 | 数据收集模板制作 | 2024-09-23 → 2024-10-14 (+21d) | 2024-10-07 → 2024-10-25 (+18d) | 11d → 10d |  | none → 77 |
| 84 | 数据收集模板下发 | 2024-10-08 → 2024-10-28 (+20d) | 2024-10-08 → 2024-10-28 (+20d) |  |  |  |
| 85 | 数据回收和校验 | 2024-10-09 → 2024-10-29 (+20d) | 2024-10-25 → 2024-11-15 (+21d) | 13d → 14d |  |  |
| 86 | **系统标准功能搭建** | 2024-09-16 → 2024-10-28 (+42d) | 2024-10-25 → 2024-11-22 (+28d) | 30d → 20d |  | 47 → none |
| 87 | 开发环境配置 | 2024-09-16 → 2024-10-28 (+42d) | 2024-09-27 → 2024-11-01 (+35d) | 10d → 5d |  | none → 81 |
| 88 | 测试环境配置 | 2024-09-30 → 2024-11-04 (+35d) | 2024-10-11 → 2024-11-06 (+26d) | 10d → 3d |  |  |
| 89 | 生产环境配置 | 2024-10-14 → 2024-11-07 (+24d) | 2024-10-18 → 2024-11-08 (+21d) | 5d → 2d |  |  |
| 90 | 环境功能验证 | 2024-10-21 → 2024-11-11 (+21d) | 2024-10-25 → 2024-11-22 (+28d) | 5d → 10d |  |  |
| 91 | 数据清洗转换和导入 | 2024-10-28 → 2024-11-18 (+21d) | 2024-11-22 → 2024-11-29 (+7d) | 20d → 10d |  |  |
| 92 | 系统标准功能培训 |  |  |  |  | 91 → 90 |
| 95 | **业务线上化阶段** | 2024-11-18 → 2024-12-09 (+21d) |  | 160d → 145d |  |  |
| 96 | 详细功能设计 | 2024-11-18 → 2024-12-09 (+21d) | 2024-12-13 → 2025-01-03 (+21d) |  |  | 蓝图确认及调整 → none |
| 103 | 最终用户培训 |  |  |  |  | 102 → none |
| 104 | 业务线上化上线 |  |  |  |  | 103 → none |
| 106 | 系统试运行 |  |  |  |  | 104 → none |
| 107 | 上线支持阶段 |  |  |  |  | 106 → none |

## Version 10 (saved 2024-09-04)

Last finish stays 2026-09-30.

Added:

| ID | Task | Duration | Start | Finish |
| --- | --- | --- | --- | --- |
| 68 | **数据标准制定** | 45d | 2024-07-29 | 2024-09-27 |
| 72 | 数据标准数转办沟通 | 3d | 2024-09-11 | 2024-09-13 |
| 73 | 数据标准修订及完善 | 13d | 2024-09-11 | 2024-09-27 |
| 74 | **国资委薪酬对接专项工作** | 80d | 2024-09-09 | 2024-12-27 |
| 75 | 国资委薪酬业务梳理（工资项、国资委上报口径） | 8d | 2024-09-09 | 2024-09-18 |
| 76 | 国资委薪酬业务方案制定 | 1d | 2024-09-09 | 2024-09-09 |
| 77 | DFG下发最新接口需求 | 1d | 2024-09-20 | 2024-09-20 |
| 78 | DFG接口解读 | 1d | 2024-09-23 | 2024-09-23 |
| 79 | 国资委薪酬业务方案修订 | 2d | 2024-09-24 | 2024-09-25 |
| 80 | 系统方案设计、原型设计 | 22d | 2024-09-26 | 2024-10-25 |
| 81 | 系统功能开发 | 13d | 2024-10-30 | 2024-11-15 |
| 82 | 系统功能测试 | 5d | 2024-11-18 | 2024-11-22 |
| 83 | 系统功能用户测试 | 5d | 2024-11-25 | 2024-11-29 |
| 84 | DFG接口开发 | 23d | 2024-10-30 | 2024-11-29 |
| 85 | DFG接口联调 | 10d | 2024-12-02 | 2024-12-13 |
| 86 | 系统功能和接口部署 | 5d | 2024-12-16 | 2024-12-20 |
| 87 | DFG生产接口对接 | 5d | 2024-12-23 | 2024-12-27 |
| 89 | 人事业务咨询业务沟通 | 5d | 2024-09-09 | 2024-09-13 |
| 90 | 业务流程优化 | 10d | 2024-09-16 | 2024-09-27 |
| 91 | 业务发展建议 | 5d | 2024-09-30 | 2024-10-04 |

Removed: 68 数据标准调研和初版编写; 72 初版数据标准数转办沟通; 73 初版数据标准修订; 75 组织、岗位、人事业务咨询; 76 数据标准制定; 77 数据标准确认和调整

Changed:

| ID | Task | Start | Finish | Duration | Complete | Predecessors |
| --- | --- | --- | --- | --- | --- | --- |
| 48 | **系统切换阶段** |  |  |  | 6% → 3% |  |
| 70 | 初版数据标准编写 |  | 2024-08-09 → 2024-09-06 (+28d) | 5d → 25d |  |  |
| 71 | 初版数据标准讨论 | 2024-08-12 → 2024-09-09 (+28d) | 2024-08-13 → 2024-09-10 (+28d) |  |  |  |
| 92 | 业务咨询报告 | 2024-09-30 → 2024-10-07 (+7d) |  | 10d → 5d |  | 组织、岗位、人事业务咨询 → 91 |
| 93 | **业务蓝图设计和确认** | 2024-10-14 → 2024-09-09 (-35d) |  | 10d → 35d |  |  |
| 94 | 业务蓝图设计 | 2024-10-14 → 2024-09-09 (-35d) | 2024-10-18 → 2024-10-11 (-7d) | 5d → 25d |  | 92 → none |
| 95 | 业务蓝图确认及调整 | 2024-10-21 → 2024-10-14 (-7d) |  | 5d → 10d |  | 94 → none |
| 96 | **数据收集** | 2024-10-14 → 2024-09-23 (-21d) | 2024-11-15 → 2024-11-01 (-14d) | 25d → 30d |  |  |
| 97 | 数据收集模板制作 | 2024-10-14 → 2024-09-23 (-21d) | 2024-10-25 → 2024-10-07 (-18d) | 10d → 11d |  | 数据标准确认和调整 → none |
| 98 | 数据收集模板下发 | 2024-10-28 → 2024-10-08 (-20d) | 2024-10-28 → 2024-10-08 (-20d) |  |  |  |
| 99 | 数据回收和校验 | 2024-10-29 → 2024-10-09 (-20d) | 2024-11-15 → 2024-11-01 (-14d) | 14d → 18d |  |  |
| 105 | 数据清洗转换和导入 | 2024-11-18 → 2024-11-04 (-14d) | 2024-11-29 → 2024-11-15 (-14d) |  |  |  |
| 106 | 系统标准功能培训 |  | 2024-11-28 → 2024-11-29 (+1d) | 4d → 5d |  |  |
| 107 | 系统切换 | 2024-11-29 → 2024-12-02 (+3d) | 2024-11-29 → 2024-12-02 (+3d) |  |  |  |
| 108 | 数据补录 | 2024-12-02 → 2024-12-03 (+1d) |  | 22d → 21d |  |  |

## Version 11 (saved 2024-09-13)

Last finish stays 2026-09-30.

Added:

| ID | Task | Duration | Start | Finish | Predecessors |
| --- | --- | --- | --- | --- | --- |
| 68 | 调研总结报告 | 5d | 2024-09-09 | 2024-09-13 |  |
| 74 | 数据标准修订及完善（依赖DFG最新接口需求） | 12d | 2024-09-11 | 2024-09-26 |  |
| 75 | 数据标准汇报及发布 | 2d | 2024-09-27 | 2024-09-30 |  |
| 78 | 国资委薪酬业务数据线下收集 | 6d | 2024-09-06 | 2024-09-13 |  |
| 82 | 国资委薪酬功能系统方案设计、原型设计 | 21d | 2024-09-26 | 2024-10-24 | 81 |
| 83 | 国资委薪酬功能系统方案设计、原型设计确认 | 3d | 2024-10-25 | 2024-10-29 | 82 |
| 84 | 国资委薪酬功能系统功能开发 | 13d | 2024-10-30 | 2024-11-15 | 83 |
| 85 | 国资委薪酬功能系统功能测试 | 5d | 2024-11-18 | 2024-11-22 | 84 |
| 86 | DFG接口开发（组织、岗位、人员信息、薪酬） | 23d | 2024-10-30 | 2024-11-29 |  |
| 88 | 国资委薪酬功能系统功能用户测试 | 5d | 2024-12-16 | 2024-12-20 |  |
| 89 | 国资委薪酬功能系统功能和接口部署 | 5d | 2024-12-16 | 2024-12-20 |  |

Removed: 73 数据标准修订及完善; 76 国资委薪酬业务方案制定; 80 系统方案设计、原型设计; 81 系统功能开发; 82 系统功能测试; 83 系统功能用户测试; 84 DFG接口开发; 86 系统功能和接口部署

Changed:

| ID | Task | Start | Finish | Duration | Complete | Predecessors |
| --- | --- | --- | --- | --- | --- | --- |
| 49 | **业务需求调研** |  | 2024-09-06 → 2024-09-13 (+7d) | 35d → 40d | 12% → 10% |  |
| 69 | **数据标准制定** |  | 2024-09-27 → 2024-09-30 (+3d) | 45d → 46d |  |  |
| 76 | **国资委薪酬对接专项工作** | 2024-09-09 → 2024-09-02 (-7d) |  | 80d → 85d |  |  |
| 77 | 国资委薪酬业务梳理（工资项、国资委上报口径） | 2024-09-09 → 2024-09-02 (-7d) | 2024-09-18 → 2024-09-06 (-12d) | 8d → 5d |  |  |
| 79 | DFG下发最新接口需求 | 2024-09-20 → 2024-09-16 (-4d) |  | 1d → 5d |  |  |
| 80 | DFG接口解读 |  |  |  |  | none → 79 |
| 81 | 国资委薪酬业务方案修订 |  |  |  |  | none → 80 |
| 91 | **组织人事业务咨询** |  | 2024-10-11 → 2024-10-18 (+7d) | 25d → 30d |  |  |
| 95 | 业务咨询报告 |  | 2024-10-11 → 2024-10-18 (+7d) | 5d → 10d |  |  |
| 111 | 数据补录 | 2024-12-03 → 2024-12-02 (-1d) |  | 21d → 22d |  | 110 → none |

## Version 12 (saved 2024-09-19)

Last finish stays 2026-09-30. Complete tasks 32 → 52.

Added:

| ID | Task | Duration | Start | Finish | Predecessors |
| --- | --- | --- | --- | --- | --- |
| 98 | 组织、岗位、职务蓝图设计 | 31d | 2024-09-13 | 2024-10-25 |  |
| 99 | 人事信息、入转调离蓝图设计 | 31d | 2024-09-13 | 2024-10-25 |  |
| 100 | 合同、员工自助、报表蓝图设计 | 31d | 2024-09-13 | 2024-10-25 |  |
| 108 | 开发环境流程开发及配置 | 15d | 2024-10-28 | 2024-11-15 | 97 |
| 109 | 测试环境配置迁移 | 3d | 2024-11-18 | 2024-11-20 | 108 |
| 110 | 生产环境配置迁移 | 2d | 2024-11-21 | 2024-11-22 | 109 |
| 114 | 系统切换（DFG数据初次同步） | 1d | 2024-12-16 | 2024-12-16 | 113 |

Removed: 105 测试环境配置; 106 生产环境配置; 110 系统切换

Changed:

| ID | Task | Start | Finish | Duration | Complete | Predecessors |
| --- | --- | --- | --- | --- | --- | --- |
| 5 | **项目准备阶段** |  | 2024-09-13 → 2024-10-18 (+35d) | 55d → 80d | 47% → 78% |  |
| 10 | **确定项目组机构** |  |  |  | 62% → 100% |  |
| 13 | 东风南方项目组成员和关键用户确认 |  |  |  | 0% → 100% |  |
| 21 | **实施计划编写** |  |  |  | 44% → 100% |  |
| 24 | 制定并完善项目工作计划 |  |  |  | 0% → 100% |  |
| 25 | **业务现状沟通** |  |  |  | 76% → 100% |  |
| 36 | 集团现状业务沟通总结 |  |  |  | 0% → 100% |  |
| 41 | **系统产品安装** |  | 2024-09-06 → 2024-10-18 (+42d) | 30d → 60d | 2% → 52% |  |
| 43 | 硬件环境需求申请 |  |  |  | 0% → 100% |  |
| 44 | 数转办提供蓝图评审模板 |  |  |  | 0% → 100% |  |
| 45 | 基础设施蓝图设计文档编写 |  |  |  | 0% → 100% |  |
| 46 | 数转办基础设施蓝图设计评审 |  |  |  | 0% → 100% |  |
| 47 | 测试、生产环境系统安装和部署 |  | 2024-09-06 → 2024-10-18 (+42d) | 10d → 40d |  |  |
| 48 | **系统切换阶段** |  |  |  | 3% → 17% |  |
| 49 | **业务需求调研** |  |  |  | 10% → 64% |  |
| 56 | 广州实业调研 |  |  |  | 0% → 100% |  |
| 57 | 广州DFS（保代分公司）调研 |  |  |  | 0% → 100% |  |
| 58 | 石家庄、兰州调研需求说明会 |  |  |  | 0% → 100% |  |
| 59 | 锦上技研、锦上阳光调研 |  |  |  | 0% → 100% |  |
| 60 | 联友出行（郑州联友出行）调研 |  |  |  | 0% → 100% |  |
| 61 | 河北DFS（石家庄、保代分公司）调研 |  |  |  | 0% → 100% |  |
| 62 | 重庆DFS（兰州）调研 |  |  |  | 0% → 100% |  |
| 63 | 营销板块调研需求说明会 |  |  |  | 0% → 100% |  |
| 65 | 联友科技调研需求说明会 |  |  |  | 0% → 100% |  |
| 66 | 联友科技调研（人力资源部【人事】、事业计划部【组织】、生产质量部【外包】） |  |  |  | 0% → 100% |  |
| 67 | 调研结果整理 |  |  |  | 0% → 90% |  |
| 68 | 调研总结报告 |  |  |  | 0% → 90% |  |
| 69 | **数据标准制定** |  |  |  | 10% → 62% |  |
| 71 | 初版数据标准编写 |  |  |  | 0% → 100% |  |
| 74 | 数据标准数转办沟通 | 2024-09-11 → 2024-09-26 (+15d) | 2024-09-13 → 2024-09-27 (+14d) | 3d → 2d |  |  |
| 76 | **国资委薪酬对接专项工作** |  |  |  | 0% → 10% |  |
| 77 | 国资委薪酬业务梳理（工资项、国资委上报口径） |  |  |  | 0% → 100% |  |
| 78 | 国资委薪酬业务数据线下收集 |  |  |  | 0% → 100% |  |
| 96 | **业务蓝图设计和确认** | 2024-09-09 → 2024-09-13 (+4d) | 2024-10-25 → 2024-11-22 (+28d) | 35d → 51d |  |  |
| 97 | **业务蓝图设计** | 2024-09-09 → 2024-09-13 (+4d) | 2024-10-11 → 2024-10-25 (+14d) | 25d → 31d |  |  |
| 101 | 业务蓝图确认及调整 | 2024-10-14 → 2024-10-28 (+14d) | 2024-10-25 → 2024-11-22 (+28d) | 10d → 20d |  | none → 97 |
| 102 | **数据收集** | 2024-09-23 → 2024-10-01 (+8d) | 2024-11-01 → 2024-11-08 (+7d) | 30d → 29d |  |  |
| 103 | 数据收集模板制作 | 2024-09-23 → 2024-10-01 (+8d) | 2024-10-07 → 2024-10-11 (+4d) | 11d → 9d |  | none → 75 |
| 104 | 数据收集模板下发 | 2024-10-08 → 2024-10-14 (+6d) | 2024-10-08 → 2024-10-14 (+6d) |  |  |  |
| 105 | 数据回收和校验 | 2024-10-09 → 2024-10-15 (+6d) | 2024-11-01 → 2024-11-08 (+7d) | 18d → 19d |  |  |
| 106 | **系统标准功能搭建** |  | 2024-11-22 → 2024-12-11 (+19d) | 20d → 33d |  |  |
| 107 | 开发环境配置 |  |  |  |  | 101 → 97 |
| 111 | 环境功能验证 | 2024-11-11 → 2024-11-25 (+14d) | 2024-11-22 → 2024-12-11 (+19d) | 10d → 13d |  | 生产环境配置 → 110 |
| 112 | 数据清洗转换和导入 | 2024-11-04 → 2024-11-11 (+7d) | 2024-11-15 → 2024-11-22 (+7d) |  |  |  |
| 113 | 系统标准功能培训 | 2024-11-25 → 2024-12-12 (+17d) | 2024-11-29 → 2024-12-13 (+14d) | 5d → 2d |  |  |
| 115 | 数据补录 | 2024-12-02 → 2024-12-17 (+15d) |  | 22d → 11d |  | none → 114 |

## Version 13 (saved 2024-09-20)

Last finish stays 2026-09-30. Complete tasks 52 → 53.

Changed:

| ID | Task | Complete |
| --- | --- | --- |
| 48 | **系统切换阶段** | 17% → 18% |
| 91 | **组织人事业务咨询** | 0% → 17% |
| 92 | 人事业务咨询业务沟通 | 0% → 100% |
